# 4 微光估计持续时间

Schedule from MS Project, 2020-02-26 to 2020-07-17, costs in ¥.
Win10NeT.COM

## Calendars

- 标准: Mon-Fri 08:00-12:00, 13:00-17:00; Sat-Sun off.

## Resources

| Resource |
| --- |
| UI专家 |
| 程序员1 |
| 程序员2 |
| 项目经理 |
| 程序员3 |
| 测试员1 |
| 测试员2 |
| 设计专家 |
| 需求专家 |
| 质量专家 |
| 间接成本 |
| 储备资金 |

## Schedule

| ID | WBS | Task | Type | Duration | Start | Finish | Predecessors | Resources | Work | Cost |
| --- | --- | --- | --- | --- | --- | --- | --- | --- | --- | --- |
| 1 | 1 | **启动** |  | 5d | 2020-02-26 | 2020-03-03 |  |  | 104h | 5,880 |
| 2 | 1.1 | 组建核心团队 | manual | 1d | 2020-02-26 | 2020-02-26 |  | UI专家; 项目经理; 需求专家; 质量专家; 设计专家 | 40h | 2,000 |
| 3 | 1.2 | 干系人分析 | manual | 1d | 2020-02-27 | 2020-02-27 |  | 项目经理 | 8h | 400 |
| 4 | 1.3 | 里程碑计划 | manual | 1d | 2020-02-28 | 2020-02-28 |  | 项目经理 | 8h | 400 |
| 5 | 1.4 | 制定项目章程 | manual | 1d | 2020-03-02 | 2020-03-02 | 2, 3, 4 | 项目经理 | 8h | 400 |
| 6 | 1.5 | 项目启动大会 | milestone, manual | 1d | 2020-03-03 | 2020-03-03 | 5 | 项目经理; UI专家; 设计专家; 需求专家; 程序员1; 间接成本 [0.1%]; 储备资金 [0.1%] | 40h | 2,680 |
| 7 | 2 | **规划** |  | 37d | 2020-03-04 | 2020-04-23 |  |  | 384h | 19,600 |
| 8 | 2.1 | **规划范围** |  | 13d | 2020-03-04 | 2020-03-20 |  |  | 152h | 7,600 |
| 9 | 2.1.1 | 制定需求说明书 | manual | 7d | 2020-03-04 | 2020-03-12 | 6 | 需求专家 | 56h | 2,800 |
| 10 | 2.1.2 | 界面设计 | manual | 3d | 2020-03-13 | 2020-03-17 | 9 | UI专家 | 24h | 1,200 |
| 11 | 2.1.3 | 详细设计说明书 | manual | 3d | 2020-03-13 | 2020-03-17 | 9 | 设计专家 | 24h | 1,200 |
| 12 | 2.1.4 | 范围说明书 | manual | 3d | 2020-03-13 | 2020-03-17 | 9 | 项目经理 | 24h | 1,200 |
| 13 | 2.1.5 | 创建WBS | manual | 2d | 2020-03-18 | 2020-03-19 | 10, 11, 12 | 项目经理 | 16h | 800 |
| 14 | 2.1.6 | 形成范围基准 | milestone, manual | 1d | 2020-03-20 | 2020-03-20 | 13 | 项目经理 | 8h | 400 |
| 15 | 2.2 | **规划时间** |  | 5d | 2020-03-23 | 2020-03-27 |  |  | 40h | 2,000 |
| 16 | 2.2.1 | 排列工作包顺序 | manual | 1d | 2020-03-23 | 2020-03-23 | 14 | 项目经理 | 8h | 400 |
| 17 | 2.2.2 | 估算资源 | manual | 1d | 2020-03-24 | 2020-03-24 | 16 | 项目经理 | 8h | 400 |
| 18 | 2.2.3 | 估算持续时间 | manual | 1d | 2020-03-25 | 2020-03-25 | 17 | 项目经理 | 8h | 400 |
| 19 | 2.2.4 | 制定进度计划 | manual | 1d | 2020-03-26 | 2020-03-26 | 18 | 项目经理 | 8h | 400 |
| 20 | 2.2.5 | 形成进度基准 | milestone, manual | 1d | 2020-03-27 | 2020-03-27 | 19 | 项目经理 | 8h | 400 |
| 21 | 2.3 | **规划成本** |  | 3d | 2020-03-30 | 2020-04-01 |  |  | 24h | 1,200 |
| 22 | 2.3.1 | 项目成本估算 | manual | 1d | 2020-03-30 | 2020-03-30 | 20 | 项目经理 | 8h | 400 |
| 23 | 2.3.2 | 项目预算 | manual | 1d | 2020-03-31 | 2020-03-31 | 22 | 项目经理 | 8h | 400 |
| 24 | 2.3.3 | 形成范围基准 | milestone, manual | 1d | 2020-04-01 | 2020-04-01 | 23 | 项目经理 | 8h | 400 |

| ID | WBS | Task | Type | Duration | Start | Finish | Predecessors | Resources | Work | Cost |
| --- | --- | --- | --- | --- | --- | --- | --- | --- | --- | --- |
| 25 | 2.4 | **规划质量** |  | 9d | 2020-03-23 | 2020-04-02 |  |  | 48h | 2,400 |
| 26 | 2.4.1 | 制定测试计划 | manual | 2d | 2020-03-23 | 2020-03-24 | 14 | 质量专家 | 16h | 800 |
| 27 | 2.4.2 | 制定测试用例 | milestone, manual | 4d | 2020-03-30 | 2020-04-02 | 26 | 质量专家 | 32h | 1,600 |
| 28 | 2.5 | **规划人力资源** |  | 4d | 2020-04-02 | 2020-04-07 |  |  | 32h | 1,600 |
| 29 | 2.5.1 | 制定人力资源计划 | manual | 2d | 2020-04-02 | 2020-04-03 | 17 | 项目经理 | 16h | 800 |
| 30 | 2.5.2 | 制定人员配备管理计划 | manual | 2d | 2020-04-06 | 2020-04-07 | 29 | 项目经理 | 16h | 800 |
| 31 | 2.6 | **规划沟通** |  | 2d | 2020-04-08 | 2020-04-09 |  |  | 16h | 800 |
| 32 | 2.6.1 | 制定沟通管理计划 | manual | 2d | 2020-04-08 | 2020-04-09 | 30 | 项目经理 | 16h | 800 |
| 33 | 2.7 | **规划采购** |  | 5d | 2020-04-10 | 2020-04-16 |  |  | 40h | 2,150 |
| 34 | 2.7.1 | 自制外购分析 | manual | 2d | 2020-04-10 | 2020-04-13 | 17 | 项目经理 | 16h | 800 |
| 35 | 2.7.2 | 制定采购文件 | manual | 3d | 2020-04-14 | 2020-04-16 | 34 | 项目经理; 间接成本 [0.1%]; 储备资金 [0.1%] | 24h | 1,350 |
| 36 | 2.8 | **规划风险** |  | 3d | 2020-04-20 | 2020-04-22 |  |  | 24h | 1,450 |
| 37 | 2.8.1 | 识别风险 | manual | 1d | 2020-04-20 | 2020-04-20 | 15, 21, 25, 28 | 项目经理 | 8h | 400 |
| 38 | 2.8.2 | 风险分析 | manual | 1d | 2020-04-21 | 2020-04-21 | 37 | 项目经理 | 8h | 400 |
| 39 | 2.8.3 | 制定风险登记册 | milestone, manual | 1d | 2020-04-22 | 2020-04-22 | 38 | 项目经理; 间接成本 [0.1%]; 储备资金 [0.1%] | 8h | 650 |
| 40 | 2.9 | 规划整合 | milestone, manual | 1d | 2020-04-23 | 2020-04-23 | 39 | 项目经理 | 8h | 400 |
| 41 | 3 | **执行与监控** |  | 54d? | 2020-04-24 | 2020-07-08 |  |  | 1856h | 78,160 |
| 42 | 3.1 | 组建项目团队 | manual | 3d | 2020-04-24 | 2020-04-28 | 7 | 测试员1; 项目经理; 测试员2; 程序员1; 程序员2; 程序员3 | 144h | 5,400 |
| 43 | 3.2 | **项目执行** |  | 23d? | 2020-04-29 | 2020-05-29 |  |  | 504h | 17,640 |
| 44 | 3.2.1 | **用户模块** |  | 23d? | 2020-04-29 | 2020-05-29 |  |  | 184h | 6,440 |
| 45 | 3.2.1.1 | 注册登录 | manual | 3d | 2020-04-29 | 2020-05-01 | 42 | 程序员1 | 24h | 840 |
| 46 | 3.2.1.2 | 首页 | manual | 1d? | 2020-05-04 | 2020-05-04 | 45 | 程序员1 | 8h | 280 |
| 47 | 3.2.1.3 | 浏览推荐页面 | manual | 2d? | 2020-05-05 | 2020-05-06 | 46 | 程序员1 | 16h | 560 |
| 48 | 3.2.1.4 | 搜索信息 | manual | 1d? | 2020-05-07 | 2020-05-07 | 47 | 程序员1 | 8h | 280 |
| 49 | 3.2.1.5 | 浏览详情页面 | manual | 2d? | 2020-05-08 | 2020-05-11 | 48 | 程序员1 | 16h | 560 |
| 50 | 3.2.1.6 | 浏览商品 | manual | 2d? | 2020-05-12 | 2020-05-13 | 49 | 程序员1 | 16h | 560 |
| 51 | 3.2.1.7 | 购物车 | manual | 3d? | 2020-05-14 | 2020-05-18 | 50 | 程序员1 | 24h | 840 |
| 52 | 3.2.1.8 | 下单 | manual | 3d? | 2020-05-19 | 2020-05-21 | 51 | 程序员1 | 24h | 840 |
| 53 | 3.2.1.9 | 查询结果 | manual | 1d? | 2020-05-22 | 2020-05-22 | 52 | 程序员1 | 8h | 280 |
| 54 | 3.2.1.10 | 发布信息 | manual | 2d? | 2020-05-25 | 2020-05-26 | 53 | 程序员1 | 16h | 560 |
| 55 | 3.2.1.11 | 个人配置 | manual | 3d? | 2020-05-27 | 2020-05-29 | 54 | 程序员1 | 24h | 840 |

| ID | WBS | Task | Type | Duration | Start | Finish | Predecessors | Resources | Work | Cost |
| --- | --- | --- | --- | --- | --- | --- | --- | --- | --- | --- |
| 56 | 3.2.2 | **淘宝商家模块** |  | 13d? | 2020-04-29 | 2020-05-15 |  |  | 104h | 3,640 |
| 57 | 3.2.2.1 | 联系入驻 | manual | 2d | 2020-04-29 | 2020-04-30 | 42 | 程序员2 | 16h | 560 |
| 58 | 3.2.2.2 | 商品管理 | manual | 3d? | 2020-05-01 | 2020-05-05 | 57 | 程序员2 | 24h | 840 |
| 59 | 3.2.2.3 | 订单处理 | manual | 2d? | 2020-05-06 | 2020-05-07 | 58 | 程序员2 | 16h | 560 |
| 60 | 3.2.2.4 | 统计 | manual | 3d? | 2020-05-08 | 2020-05-12 | 59 | 程序员2 | 24h | 840 |
| 61 | 3.2.2.5 | 商家配置 | manual | 3d? | 2020-05-13 | 2020-05-15 | 60 | 程序员2 | 24h | 840 |
| 62 | 3.2.3 | **鉴定商家模块** |  | 10d? | 2020-05-18 | 2020-05-29 |  |  | 80h | 2,800 |
| 63 | 3.2.3.1 | 注册入驻 | manual | 2d | 2020-05-18 | 2020-05-19 | 42 | 程序员2 | 16h | 560 |
| 64 | 3.2.3.2 | 订单管理 | manual | 2d? | 2020-05-20 | 2020-05-21 | 63 | 程序员2 | 16h | 560 |
| 65 | 3.2.3.3 | 统计 | manual | 3d? | 2020-05-22 | 2020-05-26 | 64 | 程序员2 | 24h | 840 |
| 66 | 3.2.3.4 | 鉴定机构配置 | manual | 3d? | 2020-05-27 | 2020-05-29 | 65 | 程序员2 | 24h | 840 |
| 67 | 3.2.4 | **管理员模块** |  | 17d? | 2020-04-29 | 2020-05-21 |  |  | 136h | 4,760 |
| 68 | 3.2.4.1 | 商家审核 | manual | 2d? | 2020-04-29 | 2020-04-30 | 42 | 程序员3 | 16h | 560 |
| 69 | 3.2.4.2 | 发布信息审核 | manual | 2d? | 2020-05-01 | 2020-05-04 | 68 | 程序员3 | 16h | 560 |
| 70 | 3.2.4.3 | 用户管理 | manual | 3d? | 2020-05-05 | 2020-05-07 | 69 | 程序员3 | 24h | 840 |
| 71 | 3.2.4.4 | 推荐系统管理 | manual | 3d? | 2020-05-08 | 2020-05-12 | 70 | 程序员3 | 24h | 840 |
| 72 | 3.2.4.5 | 统计分析 | manual | 3d? | 2020-05-13 | 2020-05-15 | 71 | 程序员3 | 24h | 840 |
| 73 | 3.2.4.6 | 备份 | manual | 4d? | 2020-05-18 | 2020-05-21 | 72 | 程序员3 | 32h | 1,120 |
| 74 | 3.3 | **项目监控** |  | 7d | 2020-06-01 | 2020-06-09 |  |  | 256h | 11,720 |
| 75 | 3.3.1 | 各项指标监控 | manual | 2d | 2020-06-01 | 2020-06-02 | 42 | 测试员1; 项目经理; 测试员2 | 48h | 1,920 |
| 76 | 3.3.2 | 监控评审 | manual | 2d | 2020-06-03 | 2020-06-04 | 66 | 设计专家; 项目经理; 需求专家; 质量专家 | 64h | 3,200 |
| 77 | 3.3.3 | 变更评审 | manual | 2d | 2020-06-05 | 2020-06-08 | 67 | 设计专家; 项目经理; 需求专家; 质量专家 | 64h | 3,200 |
| 78 | 3.3.4 | 例会 | manual | 1d | 2020-06-09 | 2020-06-09 | 42 | UI专家; 测试员1; 测试员2; 程序员1; 程序员2; 程序员3; 设计专家; 项目经理; 需求专家; 质量专家 | 80h | 3,400 |
| 79 | 3.4 | **管理干系人** |  | 6d | 2020-06-10 | 2020-06-17 |  |  | 48h | 2,400 |
| 80 | 3.4.1 | 发布项目信息 | manual | 2d | 2020-06-10 | 2020-06-11 | 42 | 项目经理 | 16h | 800 |
| 81 | 3.4.2 | 报告监控指标 | manual | 2d | 2020-06-12 | 2020-06-15 | 42 | 项目经理 | 16h | 800 |
| 82 | 3.4.3 | 干系人沟通 | manual | 2d | 2020-06-16 | 2020-06-17 | 42 | 项目经理 | 16h | 800 |

| ID | WBS | Task | Type | Duration | Start | Finish | Predecessors | Resources | Work | Cost |
| --- | --- | --- | --- | --- | --- | --- | --- | --- | --- | --- |
| 83 | 3.5 | **团队建设** |  | 15d | 2020-06-18 | 2020-07-08 |  |  | 800h | 34,000 |
| 84 | 3.5.1 | 培训 | manual | 4d | 2020-06-18 | 2020-06-23 | 42 | UI专家; 测试员1; 测试员2; 程序员1; 程序员2; 程序员3; 设计专家; 项目经理; 需求专家; 质量专家 | 320h | 13,600 |
| 85 | 3.5.2 | 娱乐活动 | manual | 3d | 2020-06-24 | 2020-06-26 | 42 | UI专家; 测试员1; 测试员2; 程序员1; 程序员2; 程序员3; 设计专家; 项目经理; 需求专家; 质量专家 | 240h | 10,200 |
| 86 | 3.5.3 | 沟通 | manual | 3d | 2020-06-29 | 2020-07-01 | 42 | UI专家; 测试员1; 测试员2; 程序员1; 程序员2; 程序员3; 设计专家; 项目经理; 需求专家; 质量专家 | 240h | 10,200 |
| 87 | 3.6 | 采购 | manual | 3d | 2020-07-02 | 2020-07-06 | 42 | 项目经理; 储备资金 [0.1%]; 间接成本 [0.1%] | 24h | 3,000 |
| 88 | 3.7 | 项目验收 | milestone, manual | 2d | 2020-07-07 | 2020-07-08 | 43 | UI专家; 设计专家; 项目经理; 需求专家; 质量专家 | 80h | 4,000 |
| 89 | 4 | **收尾** |  | 7d | 2020-07-09 | 2020-07-17 |  |  | 320h | 15,300 |
| 90 | 4.1 | 项目终验 | manual | 3d | 2020-07-09 | 2020-07-13 | 88 | UI专家; 设计专家; 项目经理; 需求专家; 质量专家; 储备资金 [0.1%]; 间接成本 [0.1%] | 120h | 7,100 |
| 91 | 4.2 | 结束采购 | manual | 1d | 2020-07-14 | 2020-07-14 | 88 | 项目经理 | 8h | 400 |
| 92 | 4.3 | 项目内部收尾 | milestone, manual | 3d | 2020-07-15 | 2020-07-17 | 79 | UI专家; 测试员1; 测试员2; 程序员1; 程序员2; 程序员3; 设计专家; 项目经理 | 192h | 7,800 |
